# Office Building

How a schedule from Primavera P6 changed from version to version. A marks actual dates.

## Version 1 (data date 2026-03-02, saved 2026-03-01, file office-building-update1.xer)

Note of the change: Package the P6 tools as a single Agent Skill

| ID | WBS | Task | Duration | Start | Finish | Predecessors | Complete | Total float | Constraint |
| --- | --- | --- | --- | --- | --- | --- | --- | --- | --- |
|  | PRE | **Preconstruction** |  | 2026-01-05 | 2026-02-06 |  |  |  |  |
| A1010 |  | Permits and approvals | 20d | 2026-01-05 A | 2026-01-30 A | M1000 | 100% |  |  |
| M1000 |  | Notice to Proceed | 0d | 2026-01-05 A | 2026-01-05 A |  | 100% |  |  |
| A1020 |  | Mobilisation | 5d | 2026-02-02 A | 2026-02-06 A | A1010 | 100% |  |  |
|  | SUB | **Substructure** |  | 2026-02-09 | 2026-04-03 |  |  |  |  |
| A2010 |  | Bulk excavation | 15d | 2026-02-09 A | 2026-03-06 | A1020 | 67% | -5d |  |
| A2030 |  | Underground services | 10d | 2026-03-05 | 2026-03-18 | A2010 SS+3d |  | 60d |  |
| A2020 |  | Foundations | 20d | 2026-03-09 | 2026-04-03 | A2010 |  | -5d |  |
|  | SUP | **Superstructure** |  | 2026-04-06 | 2026-07-24 |  |  |  |  |
| A3010 |  | Structural frame | 50d | 2026-04-06 | 2026-06-12 | A2020 |  | -5d |  |
| A3020 |  | Roof | 15d | 2026-06-08 | 2026-06-26 | A3010 FS-5d |  | 15d |  |
| A3030 |  | Facade and glazing | 30d | 2026-06-15 | 2026-07-24 | A3010 |  | -5d | finish on or before 2026-07-17 |
|  | FIN | **Fit-out and Handover** |  | 2026-07-27 | 2026-10-02 |  |  |  |  |
| A4010 |  | Interior fit-out | 40d | 2026-07-27 | 2026-09-18 | A3020, A3030 |  | -5d |  |
| A4020 |  | Testing and commissioning | 10d | 2026-09-21 | 2026-10-02 | A4010 |  | -5d |  |
| M9000 |  | Practical completion | 0d | 2026-10-02 | 2026-10-02 | A4020 |  | -5d |  |
|  | MGT | **Management** |  | 2026-01-05 | 2026-09-25 |  |  |  |  |
| A0100 |  | Project management | 195d | 2026-01-05 A | 2026-09-25 |  | 20% | 0d |  |

## Version 2 (data date 2026-03-30, saved 2026-03-29, file office-building-update2.xer)

Note of the change: Merge 355d38f44b828778b069b860bb317d17b068c81d into c74fab2921c4ac73e013d490b9f1ccbbbe55337e

Last finish 2026-10-02 → 2026-10-09 (+7d). Complete tasks 3 → 5.

Added:

| ID | Task | Duration | Start | Finish | Predecessors |
| --- | --- | --- | --- | --- | --- |
| A4015 | Lift installation | 20d | 2026-06-22 | 2026-07-17 | A3010 |

Changed:

| ID | Task | Start | Finish | Complete | Total float | Predecessors |
| --- | --- | --- | --- | --- | --- | --- |
| SUB | **Substructure** |  | 2026-04-03 → 2026-04-10 (+7d) |  |  |  |
| A2010 | Bulk excavation |  | 2026-03-06 A | 67% → 100% | -5d → none |  |
| A2020 | Foundations | 2026-03-09 A | 2026-04-03 → 2026-04-10 (+7d) | 0% → 50% | -5d → -10d |  |
| A2030 | Underground services | 2026-03-05 → 2026-03-11 A (+6d) | 2026-03-18 → 2026-03-24 A (+6d) | 0% → 100% | 60d → none | A2010 SS+3d → A2010 SS+5d |
| SUP | **Superstructure** | 2026-04-06 → 2026-04-13 (+7d) | 2026-07-24 → 2026-07-31 (+7d) |  |  |  |
| A3010 | Structural frame | 2026-04-06 → 2026-04-13 (+7d) | 2026-06-12 → 2026-06-19 (+7d) |  | -5d → -10d |  |
| A3020 | Roof | 2026-06-08 → 2026-06-15 (+7d) | 2026-06-26 → 2026-07-03 (+7d) |  |  |  |
| A3030 | Facade and glazing | 2026-06-15 → 2026-06-22 (+7d) | 2026-07-24 → 2026-07-31 (+7d) |  | -5d → -10d |  |
| FIN | **Fit-out and Handover** | 2026-07-27 → 2026-06-22 (-35d) | 2026-10-02 → 2026-10-09 (+7d) |  |  |  |
| A4010 | Interior fit-out | 2026-07-27 → 2026-08-03 (+7d) | 2026-09-18 → 2026-09-25 (+7d) |  | -5d → -10d |  |
| A4020 | Testing and commissioning | 2026-09-21 → 2026-09-28 (+7d) | 2026-10-02 → 2026-10-09 (+7d) |  | -5d → -10d | A4010 → A4010, A4015 |
| M9000 | Practical completion | 2026-10-02 → 2026-10-09 (+7d) | 2026-10-02 → 2026-10-09 (+7d) |  | -5d → -10d |  |
